# mi-17项目甘特图

Schedule from MS Project, 1999-04-01 to 2001-04-18.
gyj

## Calendars

- 标准: Mon-Fri 08:00-12:00, 13:00-17:00; Sat-Sun off.

## Schedule

| ID | WBS | Task | Duration | Start | Finish | Predecessors | Baseline start | Baseline finish | Baseline duration | Total slack | Free slack |
| --- | --- | --- | --- | --- | --- | --- | --- | --- | --- | --- | --- |
| 1 | 11000 | **组建项目办** | 11d | 1999-04-01 | 1999-04-15 |  | 1999-04-01 | 1999-04-01 | 1d | 0d |  |
| 2 | 1.1 | 成立项目办机构 | 6d | 1999-04-01 | 1999-04-08 |  | 1999-04-01 | 1999-04-01 | 1d | 0d |  |
| 3 | 1.2 | 研究配置人员 | 5d | 1999-04-09 | 1999-04-15 | 2 | 1999-04-01 | 1999-04-01 | 1d | 0d |  |
| 4 | 1.3 | 购置办公设备 | 5d | 1999-04-01 | 1999-04-07 |  | 1999-04-01 | 1999-04-01 | 1d | 6d |  |
| 5 | 1.4 | 编制办公制度 | 4d | 1999-04-01 | 1999-04-06 |  | 1999-04-01 | 1999-04-01 | 1d | 7d |  |
| 6 | 21000 | **签订武器挂架合同** | 23d | 1999-04-16 | 1999-05-18 | 1 | 1999-04-01 | 1999-04-01 | 1d | 125d | 0d |
| 7 | 2.1 | 挂架引进与国产化利弊分析 | 5d | 1999-04-16 | 1999-04-22 |  | 1999-04-01 | 1999-04-01 | 1d | 125d | 0d |
| 8 | 2.2 | 决策引进或国产化 | 5d | 1999-04-23 | 1999-04-29 | 7 | 1999-04-01 | 1999-04-01 | 1d | 125d | 0d |
| 9 | 2.3 | 成本调研与价格协商 | 8d | 1999-04-30 | 1999-05-11 | 8 | 1999-04-01 | 1999-04-01 | 1d | 125d | 0d |
| 10 | 2.4 | 签订合同 | 5d | 1999-05-12 | 1999-05-18 | 9 | 1999-04-01 | 1999-04-01 | 1d | 125d |  |
| 11 | 22000 | **技术服务合同** | 25d | 1999-04-16 | 1999-05-20 | 1 | 1999-04-01 | 1999-04-01 | 1d | 161d | 0d |
| 12 | 3.1 | 技术服务内容界定 | 10d | 1999-04-16 | 1999-04-29 |  | 1999-04-01 | 1999-04-01 | 1d | 161d | 0d |
| 13 | 3.2 | 费用商定 | 10d | 1999-04-30 | 1999-05-13 | 12 | 1999-04-01 | 1999-04-01 | 1d | 161d | 0d |
| 14 | 3.3 | 签订合同 | 5d | 1999-05-14 | 1999-05-20 | 13 | 1999-04-01 | 1999-04-01 | 1d | 161d |  |
| 15 | 23000 | **国内成品合同** | 38d | 1999-04-16 | 1999-06-08 | 1 | 1999-04-01 | 1999-04-01 | 1d | 0d |  |
| 16 | 4.1 | 成本调研 | 30d | 1999-04-16 | 1999-05-27 |  | 1999-04-01 | 1999-04-01 | 1d | 0d |  |
| 17 | 4.2 | 价格协商 | 5d | 1999-05-28 | 1999-06-03 | 16 | 1999-04-01 | 1999-04-01 | 1d | 0d |  |
| 18 | 4.3 | 合同签订 | 3d | 1999-06-04 | 1999-06-08 | 17 | 1999-04-01 | 1999-04-01 | 1d | 0d |  |
| 19 | 31000 | **冻结技术状态** | 15d | 1999-05-21 | 1999-06-10 | 11 | 1999-04-01 | 1999-04-01 | 1d | 161d | 0d |
| 20 | 5.1 | 机轮罩设计方案 | 1d | 1999-05-21 | 1999-05-21 |  | 1999-04-01 | 1999-04-01 | 1d | 175d |  |
| 21 | 5.2 | 导光板设计改进 | 10d | 1999-05-21 | 1999-06-03 |  | 1999-05-21 | 1999-06-03 | 10d | 166d |  |
| 22 | 5.3 | 操纵板设计改进 | 15d | 1999-05-21 | 1999-06-10 |  | 1999-04-01 | 1999-04-01 | 1d | 161d |  |
| 23 | 5.4 | 产品可靠性指标 | 10d | 1999-05-21 | 1999-06-03 |  | 1999-04-01 | 1999-04-01 | 1d | 166d |  |
| 24 | 5.5 | 火箭控制电路与PC-1吊舱、32管火发器协调 | 15d | 1999-05-21 | 1999-06-10 |  | 1999-04-01 | 1999-04-01 | 1d | 161d |  |

| ID | WBS | Task | Duration | Start | Finish | Predecessors | Baseline start | Baseline finish | Baseline duration | Total slack | Free slack |
| --- | --- | --- | --- | --- | --- | --- | --- | --- | --- | --- | --- |
| 25 | 32000 | **成品验收** | 5d | 2000-03-15 | 2000-03-21 | 82, 83 | 2000-01-05 | 2000-01-11 | 5d | 0d |  |
| 26 | 6.1 | KB-1验收 | 2d | 2000-03-15 | 2000-03-16 |  | 2000-01-05 | 2000-01-06 | 2d | 3d |  |
| 27 | 6.2 | SMZZ-1验收 | 3d | 2000-03-15 | 2000-03-17 |  | 2000-01-05 | 2000-01-07 | 3d | 2d |  |
| 28 | 6.3 | WIY-1验收 | 5d | 2000-03-15 | 2000-03-21 |  | 2000-01-05 | 2000-01-11 | 5d | 0d |  |
| 29 | 6.4 | JBZZ-1验收 | 4d | 2000-03-15 | 2000-03-20 |  | 2000-01-05 | 2000-01-10 | 4d | 1d |  |
| 30 | 6.5 | GDG-II11验收 | 2d | 2000-03-15 | 2000-03-16 |  | 2000-01-05 | 2000-01-06 | 2d | 3d |  |
| 31 | 6.6 | GDL-II1验收 | 2d | 2000-03-15 | 2000-03-16 |  | 2000-01-05 | 2000-01-06 | 2d | 3d |  |
| 32 | 6.7 | HF-25G验收 | 2d | 2000-03-15 | 2000-03-16 |  | 2000-01-05 | 2000-01-06 | 2d | 3d |  |
| 33 | 6.8 | 武器挂架验收 | 2d | 2000-03-15 | 2000-03-16 |  | 2000-01-05 | 2000-01-06 | 2d | 3d |  |
| 34 | 33000 | **编制文件** | 40d | 1999-05-21 | 1999-07-15 | 11 | 1999-05-21 | 1999-07-15 | 40d | 215d |  |
| 35 | 7.1 | 飞行员手册 | 15d | 1999-05-21 | 1999-06-10 |  | 1999-05-21 | 1999-06-10 | 15d | 215d | 0d |
| 36 | 7.2 | 地勤维护手册 | 15d | 1999-06-11 | 1999-07-01 | 35 | 1999-06-11 | 1999-07-01 | 15d | 215d | 0d |
| 37 | 7.3 | 试飞大纲 | 5d | 1999-07-02 | 1999-07-08 | 36 | 1999-07-02 | 1999-07-08 | 5d | 215d | 0d |
| 38 | 7.4 | 靶试大纲 | 5d | 1999-07-09 | 1999-07-15 | 37 | 1999-07-09 | 1999-07-15 | 5d | 215d |  |
| 39 | 8 | **协调工作** | 408d | 1999-07-13 | 2001-02-01 |  | 1999-07-13 | 2000-11-23 | 358d | 0d |  |
| 40 | 41000 | 资源调查 | 5d | 1999-07-13 | 1999-07-19 | 1, 49, 53 | 1999-07-13 | 1999-07-19 | 5d | 161d | 0d |
| 41 | 42000 | 组建改装团队 | 15d | 1999-07-20 | 1999-08-09 | 6, 11, 15, 40 | 1999-07-20 | 1999-08-09 | 15d | 161d |  |
| 42 | 8.3 | **部队协调** | 227d | 2000-03-22 | 2001-02-01 |  | 2000-01-12 | 2000-11-23 | 227d | 0d |  |
| 43 | 8.3.1 | A团协调 | 7d | 2000-03-22 | 2000-03-30 | 25, 41 | 2000-01-12 | 2000-01-20 | 7d | 0d |  |
| 44 | 43200 | B团协调 | 7d | 2000-05-17 | 2000-05-25 | 76 | 2000-03-08 | 2000-03-16 | 7d | 0d |  |
| 45 | 43300 | C团协调 | 7d | 2000-08-23 | 2000-08-31 | 77 | 2000-06-14 | 2000-06-22 | 7d | 0d |  |
| 46 | 43400 | D团协调 | 7d | 2000-09-20 | 2000-09-28 | 45, 78 | 2000-07-12 | 2000-07-20 | 7d | 0d |  |
| 47 | 43500 | E团协调 | 7d | 2000-11-01 | 2000-11-09 | 46, 79 | 2000-08-23 | 2000-08-31 | 7d | 0d |  |
| 48 | 43600 | F团协调 | 7d | 2001-01-24 | 2001-02-01 | 47, 80 | 2000-11-15 | 2000-11-23 | 7d | 0d |  |

| ID | WBS | Task | Duration | Start | Finish | Predecessors | Baseline start | Baseline finish | Baseline duration | Total slack | Free slack |
| --- | --- | --- | --- | --- | --- | --- | --- | --- | --- | --- | --- |
| 49 | 51000 | **路线优化** | 20d | 1999-04-16 | 1999-05-13 | 1 | 1999-04-16 | 1999-05-13 | 20d | 203d | 42d |
| 50 | 9.1 | 计算各部队距离 | 5d | 1999-04-16 | 1999-04-22 |  | 1999-04-16 | 1999-04-22 | 5d | 203d | 0d |
| 51 | 9.2 | 计算路线 | 10d | 1999-04-23 | 1999-05-06 | 50 | 1999-04-23 | 1999-05-06 | 10d | 203d | 0d |
| 52 | 9.3 | 分析得出最优路线 | 5d | 1999-05-07 | 1999-05-13 | 51 | 1999-05-07 | 1999-05-13 | 5d | 203d |  |
| 53 | 52000 | **工序优化** | 22d | 1999-06-11 | 1999-07-12 | 19 | 1999-06-11 | 1999-07-12 | 22d | 161d | 0d |
| 54 | 10.1 | 改装工序结构分解 | 5d | 1999-06-11 | 1999-06-17 |  | 1999-06-11 | 1999-06-17 | 5d | 161d | 0d |
| 55 | 10.2 | 建立工序逻辑关系 | 5d | 1999-06-18 | 1999-06-24 | 54 | 1999-06-18 | 1999-06-24 | 5d | 161d | 0d |
| 56 | 10.3 | 计算各工序时间 | 5d | 1999-06-25 | 1999-07-01 | 55 | 1999-06-25 | 1999-07-01 | 5d | 161d | 0d |
| 57 | 10.4 | 得出关键线路 | 4d | 1999-07-02 | 1999-07-07 | 56 | 1999-07-02 | 1999-07-07 | 4d | 161d | 0d |
| 58 | 10.5 | 进行工序优化 | 3d | 1999-07-08 | 1999-07-12 | 57 | 1999-07-08 | 1999-07-12 | 3d | 161d |  |
| 59 | 11 | **改装实施** | 270d | 2000-03-31 | 2001-04-12 |  | 2000-01-21 | 2001-02-01 | 270d | 0d |  |
| 60 | 53100 | A部队改装 | 30d | 2000-03-31 | 2000-05-11 | 43 | 2000-01-21 | 2000-03-02 | 30d | 0d |  |
| 61 | 53200 | B部队改装 | 60d | 2000-05-26 | 2000-08-17 | 44, 60 | 2000-03-17 | 2000-06-08 | 60d | 0d |  |
| 62 | 53300 | C部队改装 | 10d | 2000-09-01 | 2000-09-14 | 45, 61 | 2000-06-23 | 2000-07-06 | 10d | 0d |  |
| 63 | 53400 | D部队改装 | 20d | 2000-09-29 | 2000-10-26 | 46, 62 | 2000-07-21 | 2000-08-17 | 20d | 0d |  |
| 64 | 53500 | E部队改装 | 50d | 2000-11-10 | 2001-01-18 | 47, 63 | 2000-09-01 | 2000-11-09 | 50d | 0d |  |
| 65 | 53600 | F部队改装 | 50d | 2001-02-02 | 2001-04-12 | 48, 64 | 2000-11-24 | 2001-02-01 | 50d | 0d |  |
| 66 | 54000 | **改装结束** | 1d | 2001-04-18 | 2001-04-18 | 81 | 2001-02-07 | 2001-02-07 | 1d | 0d |  |
| 67 | 12.1 | 技术绩效 | 1d | 2001-04-18 | 2001-04-18 |  | 2001-02-07 | 2001-02-07 | 1d | 0d |  |
| 68 | 12.2 | 成本绩效 | 1d | 2001-04-18 | 2001-04-18 |  | 2001-02-07 | 2001-02-07 | 1d | 0d |  |
| 69 | 12.3 | 进度计划绩效 | 1d | 2001-04-18 | 2001-04-18 |  | 2001-02-07 | 2001-02-07 | 1d | 0d |  |
| 70 | 12.4 | 客户联系 | 1d | 2001-04-18 | 2001-04-18 |  | 2001-02-07 | 2001-02-07 | 1d | 0d |  |
| 71 | 12.5 | 团队联系 | 1d | 2001-04-18 | 2001-04-18 |  | 2001-02-07 | 2001-02-07 | 1d | 0d |  |
| 72 | 12.6 | 交流 | 1d | 2001-04-18 | 2001-04-18 |  | 2001-02-07 | 2001-02-07 | 1d | 0d |  |
| 73 | 12.7 | 识别问题与解决问题 | 1d | 2001-04-18 | 2001-04-18 |  | 2001-02-07 | 2001-02-07 | 1d | 0d |  |
| 74 | 12.8 | 对未来项目的建议 | 1d | 2001-04-18 | 2001-04-18 |  | 2001-02-07 | 2001-02-07 | 1d | 0d |  |

| ID | WBS | Task | Duration | Start | Finish | Predecessors | Baseline start | Baseline finish | Baseline duration | Total slack |
| --- | --- | --- | --- | --- | --- | --- | --- | --- | --- | --- |
| 75 | 13 | **机务、飞行员培训** | 243d | 2000-05-12 | 2001-04-17 |  | 2000-03-03 | 2001-02-06 | 243d | 0d |
| 76 | 61100 | A团培训 | 3d | 2000-05-12 | 2000-05-16 | 34, 60 | 2000-03-03 | 2000-03-07 | 3d | 0d |
| 77 | 61200 | B团培训 | 3d | 2000-08-18 | 2000-08-22 | 61 | 2000-06-09 | 2000-06-13 | 3d | 0d |
| 78 | 61300 | C团培训 | 3d | 2000-09-15 | 2000-09-19 | 62 | 2000-07-07 | 2000-07-11 | 3d | 0d |
| 79 | 61400 | D团培训 | 3d | 2000-10-27 | 2000-10-31 | 63 | 2000-08-18 | 2000-08-22 | 3d | 0d |
| 80 | 61500 | E团培训 | 3d | 2001-01-19 | 2001-01-23 | 64 | 2000-11-10 | 2000-11-14 | 3d | 0d |
| 81 | 61600 | F团培训 | 3d | 2001-04-13 | 2001-04-17 | 65 | 2001-02-02 | 2001-02-06 | 3d | 0d |
| 82 | 71000 | 武器挂架交付 | 90d | 1999-05-19 | 1999-09-21 | 6 | 1999-05-19 | 1999-05-19 | 1d | 125d |
| 83 | 72000 | **国内成品交付** | 200d | 1999-06-09 | 2000-03-14 | 15 | 1999-06-09 | 2000-01-04 | 150d | 0d |
| 84 | 15.1 | KB-1交付 | 200d | 1999-06-09 | 2000-03-14 |  | 1999-06-09 | 2000-01-04 | 150d | 0d |
| 85 | 15.2 | SMZZ-1交付 | 200d | 1999-06-09 | 2000-03-14 |  | 1999-06-09 | 2000-01-04 | 150d | 0d |
| 86 | 15.3 | JBZZ-1交付 | 200d | 1999-06-09 | 2000-03-14 |  | 1999-06-09 | 2000-01-04 | 150d | 0d |
| 87 | 15.4 | WJY-1交付 | 200d | 1999-06-09 | 2000-03-14 |  | 1999-06-09 | 2000-01-04 | 150d | 0d |
| 88 | 15.5 | GDG-II11交付 | 200d | 1999-06-09 | 2000-03-14 |  | 1999-06-09 | 2000-01-04 | 150d | 0d |
| 89 | 15.6 | GDL-II1交付 | 200d | 1999-06-09 | 2000-03-14 |  | 1999-06-09 | 2000-01-04 | 150d | 0d |
| 90 | 15.7 | HF-25G交付 | 200d | 1999-06-09 | 2000-03-14 |  | 1999-06-09 | 2000-01-04 | 150d | 0d |
