# 平行作业进度计划甘特图5.-

Schedule from MS Project, 2000-10-13 to 2000-12-04.
gyj

## Calendars

- 标准: Mon-Fri 08:00-12:00, 13:00-17:00; Sat-Sun off.

## Schedule

| ID | Task | Type | Duration | Start | Finish | Predecessors | Baseline start | Baseline finish | Baseline duration | Total slack | Free slack |
| --- | --- | --- | --- | --- | --- | --- | --- | --- | --- | --- | --- |
| 1 | 平行作业改装 | milestone | 0d | 2000-10-13 | 2000-10-13 |  | 2000-10-13 | 2000-10-13 | 0d | 0d |  |
| 2 | A结构改装 |  | 2d | 2000-10-13 | 2000-10-16 | 1 | 2000-10-13 | 2000-10-16 | 2d | 0d |  |
| 3 | A发射控制系统 |  | 3d | 2000-10-13 | 2000-10-17 | 1 | 2000-10-13 | 2000-10-17 | 3d | 10d | 0d |
| 4 | A射击瞄准系统 |  | 0.75d | 2000-10-13 | 2000-10-13 | 1 | 2000-10-13 | 2000-10-13 | 0.75d | 19.25d | 0d |
| 5 | A外挂武器系统 |  | 4d | 2000-10-17 | 2000-10-20 | 2 | 2000-10-17 | 2000-10-20 | 4d | 0d |  |
| 6 | A联试校靶 |  | 2d | 2000-10-23 | 2000-10-24 | 3, 4, 5 | 2000-10-23 | 2000-10-24 | 2d | 14d | 2d |
| 7 | B结构改装 |  | 2d | 2000-10-17 | 2000-10-18 | 2 | 2000-10-17 | 2000-10-18 | 2d | 2d | 0d |
| 8 | B发射控制系统 |  | 3d | 2000-10-18 | 2000-10-20 | 3 | 2000-10-18 | 2000-10-20 | 3d | 10d | 0d |
| 9 | B射击瞄准系统 |  | 0.75d | 2000-10-13 | 2000-10-16 | 4 | 2000-10-13 | 2000-10-16 | 0.75d | 20.5d | 0d |
| 10 | B外挂武器系统 |  | 4d | 2000-10-23 | 2000-10-26 | 7, 5 | 2000-10-19 | 2000-10-24 | 4d | 0d |  |
| 11 | B联试校靶 |  | 2d | 2000-10-27 | 2000-10-30 | 8, 9, 10, 6 | 2000-10-25 | 2000-10-26 | 2d | 12d | 2d |
| 12 | C结构改装 |  | 2d | 2000-10-19 | 2000-10-20 | 7 | 2000-10-19 | 2000-10-20 | 2d | 4d | 0d |
| 13 | C发射控制系统 |  | 3d | 2000-10-23 | 2000-10-25 | 8 | 2000-10-23 | 2000-10-25 | 3d | 10d | 0d |
| 14 | C射击瞄准系统 |  | 0.75d | 2000-10-16 | 2000-10-17 | 9 | 2000-10-16 | 2000-10-17 | 0.75d | 21.75d | 0d |
| 15 | C外挂武器系统 |  | 4d | 2000-10-27 | 2000-11-01 | 12, 10 | 2000-10-23 | 2000-10-26 | 4d | 0d |  |
| 16 | C联试校靶 |  | 2d | 2000-11-02 | 2000-11-03 | 13, 14, 15, 11 | 2000-10-27 | 2000-10-30 | 2d | 10d | 2d |
| 17 | D结构改装 |  | 2d | 2000-10-23 | 2000-10-24 | 12 | 2000-10-23 | 2000-10-24 | 2d | 6d | 0d |
| 18 | D发射控制系统 |  | 3d | 2000-10-26 | 2000-10-30 | 13 | 2000-10-26 | 2000-10-30 | 3d | 10d | 0d |
| 19 | D射击瞄准系统 |  | 0.75d | 2000-10-17 | 2000-10-17 | 14 | 2000-10-17 | 2000-10-17 | 0.75d | 23d | 0d |
| 20 | D外挂武器系统 |  | 4d | 2000-11-02 | 2000-11-07 | 17, 15 | 2000-10-25 | 2000-10-30 | 4d | 0d |  |
| 21 | D联试校靶 |  | 2d | 2000-11-08 | 2000-11-09 | 18, 19, 20, 16 | 2000-10-31 | 2000-11-01 | 2d | 8d | 2d |
| 22 | E结构改装 |  | 2d | 2000-10-25 | 2000-10-26 | 17 | 2000-10-25 | 2000-10-26 | 2d | 8d | 0d |
| 23 | E发射控制系统 |  | 3d | 2000-10-31 | 2000-11-02 | 18 | 2000-10-31 | 2000-11-02 | 3d | 10d | 0d |
| 24 | E射击瞄准系统 |  | 0.75d | 2000-10-18 | 2000-10-18 | 19 | 2000-10-18 | 2000-10-18 | 0.75d | 24.25d | 0d |
| 25 | E外挂武器系统 |  | 4d | 2000-11-08 | 2000-11-13 | 22, 20 | 2000-10-27 | 2000-11-01 | 4d | 0d |  |
| 26 | E联试校靶 |  | 2d | 2000-11-14 | 2000-11-15 | 23, 24, 25, 21 | 2000-11-03 | 2000-11-06 | 2d | 6d | 2d |
| 27 | F结构改装 |  | 2d | 2000-10-27 | 2000-10-30 | 22 | 2000-10-27 | 2000-10-30 | 2d | 10d | 0d |
| 28 | F发射控制系统 |  | 3d | 2000-11-03 | 2000-11-07 | 23 | 2000-11-03 | 2000-11-07 | 3d | 10d | 0d |
| 29 | F射击瞄准系统 |  | 0.75d | 2000-10-18 | 2000-10-19 | 24 | 2000-10-18 | 2000-10-19 | 0.75d | 25.5d | 0d |
| 30 | F外挂武器系统 |  | 4d | 2000-11-14 | 2000-11-17 | 27, 25 | 2000-10-31 | 2000-11-03 | 4d | 0d |  |
| 31 | F联试校靶 |  | 2d | 2000-11-20 | 2000-11-21 | 28, 29, 30, 26 | 2000-11-08 | 2000-11-09 | 2d | 4d | 2d |
| 32 | G结构改装 |  | 2d | 2000-10-31 | 2000-11-01 | 27 | 2000-10-31 | 2000-11-01 | 2d | 12d | 0d |
| 33 | G发射控制系统 |  | 3d | 2000-11-08 | 2000-11-10 | 28 | 2000-11-08 | 2000-11-10 | 3d | 10d | 0d |
| 34 | G射击瞄准系统 |  | 0.75d | 2000-10-19 | 2000-10-20 | 29 | 2000-10-19 | 2000-10-20 | 0.75d | 26.75d | 0d |
| 35 | G外挂武器系统 |  | 4d | 2000-11-20 | 2000-11-23 | 32, 30 | 2000-11-02 | 2000-11-07 | 4d | 0d |  |
| 36 | G联试校靶 |  | 2d | 2000-11-24 | 2000-11-27 | 33, 34, 35, 31 | 2000-11-13 | 2000-11-14 | 2d | 2d |  |
| 37 | H结构改装 |  | 2d | 2000-11-02 | 2000-11-03 | 32 | 2000-11-02 | 2000-11-03 | 2d | 14d |  |
| 38 | H发射控制系统 |  | 3d | 2000-11-13 | 2000-11-15 | 33 | 2000-11-13 | 2000-11-15 | 3d | 10d |  |
| 39 | H射击瞄准系统 |  | 0.75d | 2000-10-20 | 2000-10-20 | 34 | 2000-10-20 | 2000-10-20 | 0.75d | 28d |  |
| 40 | H外挂武器系统 |  | 4d | 2000-11-24 | 2000-11-29 | 37, 35 | 2000-11-06 | 2000-11-09 | 4d | 0d |  |
| 41 | H联试校靶 |  | 2d | 2000-11-30 | 2000-12-01 | 38, 39, 40, 36 | 2000-11-16 | 2000-11-17 | 2d | 0d |  |
| 42 | 试飞 | milestone | 1d | 2000-12-04 | 2000-12-04 | 41 | 2000-12-04 | 2000-12-04 | 1d | 0d |  |
