# 图6.4 国产外挂装置研制进度安排

Schedule from MS Project, 1999-06-04 to 1999-12-31.
gyj

## Calendars

- 标准: Mon-Fri 08:00-12:00, 13:00-17:00; Sat-Sun off.

## Schedule

| ID | WBS | Task | Type | Duration | Start | Finish | Predecessors | Baseline start | Baseline finish | Baseline duration | Total slack | Free slack | Constraint |
| --- | --- | --- | --- | --- | --- | --- | --- | --- | --- | --- | --- | --- | --- |
| 1 | 1 | 武器挂架研制 | milestone | 0d | 1999-06-04 | 1999-06-04 |  | 1999-06-04 | 1999-06-04 | 0d | 18d | 0d | start no earlier than 1999-06-04 |
| 2 | 2 | **研制** |  | 77d | 1999-06-04 | 1999-09-20 | 1 | 1999-06-04 | 1999-09-20 | 77d | 18d |  |  |
| 3 | 2.1 | **机身挂架** |  | 77d | 1999-06-04 | 1999-09-20 |  | 1999-06-04 | 1999-09-20 | 77d | 26d |  |  |
| 4 | 2.1.1 | **技术状态** |  | 37d | 1999-06-04 | 1999-07-26 |  | 1999-06-04 | 1999-07-26 | 37d | 0d |  |  |
| 5 | 2.1.1.1 | 机身接口取样 |  | 7d | 1999-07-12 | 1999-07-20 |  | 1999-07-12 | 1999-07-20 | 7d | 0d |  | start no earlier than 1999-07-12 |
| 6 | 2.1.1.2 | 对俄挂架分析 |  | 7d | 1999-06-04 | 1999-06-14 |  | 1999-06-04 | 1999-06-14 | 7d | 26d |  | finish no earlier than 1999-06-14 |
| 7 | 2.1.1.3 | 确定设计参数 |  | 4d | 1999-07-21 | 1999-07-26 | 5, 6 | 1999-07-21 | 1999-07-26 | 4d | 0d |  | start no earlier than 1999-05-16 |
| 8 | 2.1.2 | **设计** |  | 16d | 1999-07-27 | 1999-08-17 |  | 1999-07-27 | 1999-08-17 | 16d | 0d |  |  |
| 9 | 2.1.2.1 | 图样设计 |  | 11d | 1999-07-27 | 1999-08-10 | 7 | 1999-07-27 | 1999-08-10 | 11d | 0d |  | start no earlier than 1999-07-27 |
| 10 | 2.1.2.2 | 工艺规程 |  | 5d | 1999-08-11 | 1999-08-17 | 9 | 1999-08-11 | 1999-08-17 | 5d | 98d |  |  |
| 11 | 2.1.2.3 | 工装设计 |  | 5d | 1999-08-11 | 1999-08-17 | 9 | 1999-08-11 | 1999-08-17 | 5d | 0d |  |  |
| 12 | 2.1.3 | **试制试验** |  | 24d | 1999-08-18 | 1999-09-20 |  | 1999-08-18 | 1999-09-20 | 24d | 0d |  |  |
| 13 | 2.1.3.1 | 产品试制 |  | 20d | 1999-08-18 | 1999-09-14 | 11 | 1999-08-18 | 1999-09-14 | 20d | 0d |  | finish no earlier than 1999-09-14 |
| 14 | 2.1.3.2 | 地面试验 |  | 4d | 1999-09-15 | 1999-09-20 | 13 | 1999-09-15 | 1999-09-20 | 4d | 0d |  | start no earlier than 1999-09-15 |
| 15 | 2.2 | **通用挂梁** |  | 59d | 1999-06-04 | 1999-08-25 |  | 1999-06-04 | 1999-08-25 | 59d | 18d |  |  |
| 16 | 2.2.1 | **技术状态** |  | 7d | 1999-06-04 | 1999-06-14 |  | 1999-06-04 | 1999-06-14 | 7d | 18d |  |  |
| 17 | 2.2.1.1 | 对俄挂梁分析 |  | 7d | 1999-06-04 | 1999-06-14 |  | 1999-06-04 | 1999-06-14 | 7d | 18d | 0d |  |
| 18 | 2.2.1.2 | 确定设计参数 |  | 5d | 1999-06-04 | 1999-06-10 |  | 1999-06-04 | 1999-06-10 | 5d | 20d | 2d |  |
| 19 | 2.2.2 | **设计** |  | 21d | 1999-06-15 | 1999-07-13 |  | 1999-06-15 | 1999-07-13 | 21d | 18d |  |  |
| 20 | 2.2.2.1 | 图样设计 |  | 11d | 1999-06-15 | 1999-06-29 | 17, 18 | 1999-06-15 | 1999-06-29 | 11d | 18d | 0d |  |
| 21 | 2.2.2.2 | 工艺规程 |  | 5d | 1999-06-30 | 1999-07-06 | 20 | 1999-06-30 | 1999-07-06 | 5d | 18d | 0d |  |
| 22 | 2.2.2.3 | 工装设计 |  | 5d | 1999-07-07 | 1999-07-13 | 21 | 1999-07-07 | 1999-07-13 | 5d | 18d | 0d |  |
| 23 | 2.2.3 | **试制试验** |  | 31d | 1999-07-14 | 1999-08-25 |  | 1999-07-14 | 1999-08-25 | 31d | 18d |  |  |
| 24 | 2.2.3.1 | 产品试制 |  | 20d | 1999-07-14 | 1999-08-10 | 22 | 1999-07-14 | 1999-08-10 | 20d | 18d | 0d |  |
| 25 | 2.2.3.2 | 地面试验 |  | 11d | 1999-08-11 | 1999-08-25 | 24 | 1999-08-11 | 1999-08-25 | 11d | 18d |  |  |

| ID | WBS | Task | Type | Duration | Start | Finish | Predecessors | Baseline start | Baseline finish | Baseline duration | Total slack | Constraint |
| --- | --- | --- | --- | --- | --- | --- | --- | --- | --- | --- | --- | --- |
| 26 | 3 | **试验** |  | 49d | 1999-09-21 | 1999-11-26 | 1 | 1999-09-21 | 1999-11-26 | 49d | 0d |  |
| 27 | 3.1 | 首架机改装 |  | 24d | 1999-09-21 | 1999-10-22 | 25, 14 | 1999-09-21 | 1999-10-22 | 24d | 0d |  |
| 28 | 3.2 | 空飞试验 |  | 20d | 1999-10-25 | 1999-11-19 | 27 | 1999-10-25 | 1999-11-19 | 20d | 0d |  |
| 29 | 3.3 | 设计定型 |  | 5d | 1999-11-22 | 1999-11-26 | 28 | 1999-11-22 | 1999-11-26 | 5d | 0d |  |
| 30 | 4 | 交付 | milestone | 25d | 1999-11-29 | 1999-12-31 | 29 | 1999-11-29 | 1999-12-31 | 25d | 0d | start no earlier than 1999-11-29 |
