# 图6.6 融入纠正措施后的项目计划-调整后

Schedule from MS Project, 1999-10-01 to 2000-12-24.
gyj

## Calendars

- 标准: Mon-Fri 08:00-12:00, 13:00-17:00; Sat-Sun off. Exceptions (off unless hours are given): 1999-10-30 08:00-12:00, 13:00-17:00, 2000-10-01 to 2000-10-31 08:00-12:00, 13:00-17:00, 2000-11-04 to 2000-11-30 08:00-12:00, 13:00-17:00, 2000-12-02 to 2000-12-31 08:00-12:00, 13:00-17:00.

## Schedule

| ID | WBS | Task | Duration | Start | Finish | Predecessors | Baseline start | Baseline finish | Baseline duration | Total slack | Free slack | Constraint |
| --- | --- | --- | --- | --- | --- | --- | --- | --- | --- | --- | --- | --- |
| 1 | 1 | **挂架返修** | 65d | 1999-10-01 | 1999-12-29 |  | 1999-10-01 | 1999-12-29 | 65d | 0d |  |  |
| 2 | 1.1 | 方案选择 | 15d | 1999-10-01 | 1999-10-21 |  | 1999-10-01 | 1999-10-21 | 15d | 0d |  |  |
| 3 | 1.2 | 方案评审 | 3d | 1999-10-22 | 1999-10-26 | 2 | 1999-10-22 | 1999-10-26 | 3d | 0d |  |  |
| 4 | 1.3 | 工装制造 | 12d | 1999-10-27 | 1999-11-10 | 3 | 1999-10-27 | 1999-11-10 | 12d | 0d |  |  |
| 5 | 1.4 | 返修实施 | 26d | 1999-11-11 | 1999-12-16 | 4 | 1999-11-11 | 1999-12-16 | 26d | 0d |  |  |
| 6 | 1.5 | 地面调试 | 5d | 1999-12-17 | 1999-12-23 | 5 | 1999-12-17 | 1999-12-23 | 5d | 0d |  |  |
| 7 | 1.6 | 交付 | 4d | 1999-12-24 | 1999-12-29 | 6 | 1999-12-24 | 1999-12-29 | 4d | 0d |  |  |
| 8 | 2 | **挂架研制** | 170d | 1999-10-05 | 2000-05-26 |  | 1999-10-05 | 2000-05-26 | 170d | 34d |  |  |
| 9 | 2.1 | 对比试验 | 20d | 1999-10-05 | 1999-10-30 |  | 1999-10-05 | 1999-10-30 | 20d | 34d | 0d | finish no earlier than 1999-10-30 |
| 10 | 2.2 | 方案评审 | 22d | 1999-11-01 | 1999-11-30 | 9 | 1999-11-01 | 1999-11-30 | 22d | 34d | 0d |  |
| 11 | 2.3 | 挂架改进 | 38d | 1999-12-01 | 2000-01-21 | 10 | 1999-12-01 | 2000-01-21 | 38d | 34d | 0d |  |
| 12 | 2.4 | 测振试验 | 25d | 2000-01-24 | 2000-02-25 | 11 | 2000-01-24 | 2000-02-25 | 25d | 34d | 0d |  |
| 13 | 2.5 | 空飞靶试 | 20d | 2000-02-28 | 2000-03-24 | 12 | 2000-02-28 | 2000-03-24 | 20d | 34d | 0d |  |
| 14 | 2.6 | 鉴定 | 25d | 2000-03-27 | 2000-04-28 | 13 | 2000-03-27 | 2000-04-28 | 25d | 34d | 0d |  |
| 15 | 2.7 | 交付 | 20d | 2000-05-01 | 2000-05-26 | 14 | 2000-05-01 | 2000-05-26 | 20d | 34d |  |  |
| 16 | 3 | **协调工作** | 232d | 1999-12-30 | 2000-11-04 | 7 | 1999-12-30 | 2000-11-17 | 232d | 0d |  |  |
| 17 | 3.1 | 资源调查 | 5d | 1999-12-30 | 2000-01-05 |  | 1999-12-30 | 2000-01-05 | 5d | 0d |  |  |
| 18 | 3.2 | 组建改装团队 | 15d | 2000-01-06 | 2000-01-26 | 17 | 2000-01-06 | 2000-01-26 | 15d | 0d |  |  |
| 19 | 3.3 | **部队协调** | 212d | 2000-01-27 | 2000-11-04 |  | 2000-01-27 | 2000-11-17 | 212d | 0d |  |  |
| 20 | 3.3.1 | A团协调 | 7d | 2000-01-27 | 2000-02-04 | 18 | 2000-01-27 | 2000-02-04 | 7d | 0d |  |  |
| 21 | 3.3.2 | B团协调 | 7d | 2000-03-20 | 2000-03-28 | 35 | 2000-03-20 | 2000-03-28 | 7d | 0d |  |  |
| 22 | 3.3.3 | C团协调 | 7d | 2000-06-21 | 2000-06-29 | 28, 36 | 2000-06-21 | 2000-06-29 | 7d | 0d |  |  |
| 23 | 3.3.4 | D团协调 | 7d | 2000-07-14 | 2000-07-24 | 15, 37 | 2000-07-14 | 2000-07-24 | 7d | 0d |  |  |
| 24 | 3.3.5 | E团协调 | 7d | 2000-08-22 | 2000-08-30 | 38 | 2000-08-22 | 2000-08-30 | 7d | 0d |  |  |
| 25 | 3.3.6 | F团协调 | 7d | 2000-10-29 | 2000-11-04 | 39 | 2000-11-09 | 2000-11-17 | 7d | 0d |  |  |

| ID | WBS | Task | Type | Duration | Start | Finish | Predecessors | Baseline start | Baseline finish | Baseline duration | Total slack |
| --- | --- | --- | --- | --- | --- | --- | --- | --- | --- | --- | --- |
| 26 | 4 | **改装实施** |  | 255d | 2000-02-07 | 2000-12-24 |  | 2000-02-07 | 2001-01-26 | 255d | 0d |
| 27 | 4.1 | A部队改装 |  | 30d | 2000-02-07 | 2000-03-17 | 20 | 2000-02-07 | 2000-03-17 | 30d | 0d |
| 28 | 4.2 | B部队改装 |  | 60d | 2000-03-29 | 2000-06-20 | 21 | 2000-03-29 | 2000-06-20 | 60d | 0d |
| 29 | 4.3 | C部队改装 |  | 10d | 2000-06-30 | 2000-07-13 | 22 | 2000-06-30 | 2000-07-13 | 10d | 0d |
| 30 | 4.4 | D部队改装 |  | 20d | 2000-07-25 | 2000-08-21 | 23 | 2000-07-25 | 2000-08-21 | 20d | 0d |
| 31 | 4.5 | E部队改装 |  | 50d | 2000-08-31 | 2000-10-28 | 24 | 2000-08-31 | 2000-11-08 | 50d | 0d |
| 32 | 4.6 | F部队改装 |  | 50d | 2000-11-05 | 2000-12-24 | 25 | 2000-11-20 | 2001-01-26 | 50d | 0d |
| 33 | 5 | 改装结束 | milestone | 0d | 2000-12-24 | 2000-12-24 | 40 | 2001-01-26 | 2001-01-26 | 0d | 0d |
| 34 | 6 | **机务、飞行员培训** |  | 228d | 2000-03-15 | 2000-12-24 |  | 2000-03-15 | 2001-01-26 | 228d | 0d |
| 35 | 6.1 | A团培训 |  | 3d | 2000-03-15 | 2000-03-17 | 27FF | 2000-03-15 | 2000-03-17 | 3d | 0d |
| 36 | 6.2 | B团培训 |  | 3d | 2000-06-16 | 2000-06-20 | 28FF | 2000-06-16 | 2000-06-20 | 3d | 0d |
| 37 | 6.3 | C团培训 |  | 3d | 2000-07-11 | 2000-07-13 | 29FF | 2000-07-11 | 2000-07-13 | 3d | 0d |
| 38 | 6.4 | D团培训 |  | 3d | 2000-08-17 | 2000-08-21 | 30FF | 2000-08-17 | 2000-08-21 | 3d | 0d |
| 39 | 6.5 | E团培训 |  | 3d | 2000-10-26 | 2000-10-28 | 31FF | 2000-11-06 | 2000-11-08 | 3d | 0d |
| 40 | 6.6 | F团培训 |  | 3d | 2000-12-22 | 2000-12-24 | 32FF | 2001-01-24 | 2001-01-26 | 3d | 0d |
