# 单机改装甘特图

Schedule from MS Project, 2000-10-10 to 2000-10-19, status date 2000-10-14.
gyj

## Calendars

- 标准: Mon-Fri 08:00-12:00, 13:00-17:00; Sat-Sun off.

## Resources

| Resource |
| --- |
| 114厂装配钳工1人 |
| 53所设计员1人 |
| 空一所总师1人 |
| 124厂设计员人 |
| 144厂设计员1人 |
| 空工院1人 |
| 114厂设计员1人 |
| 114厂焊接技师1人 |
| 53所装配钳工1人 |
| 空一所设计员1人 |
| 124厂装配钳工人 |
| 144厂装配钳工1人 |

## Schedule

| ID | Task | Type | Duration | Start | Finish | Predecessors | Baseline start | Baseline finish | Baseline duration | Total slack | Free slack | Constraint | Resources | Work |
| --- | --- | --- | --- | --- | --- | --- | --- | --- | --- | --- | --- | --- | --- | --- |
| 1 | 单机改装 | milestone | 0d | 2000-10-10 08:00 | 2000-10-10 08:00 |  | 2000-10-10 08:00 | 2000-10-10 08:00 | 0d | 0d |  |  |  |  |
| 2 | 拆卸机舱盖板 |  | 0.5d | 2000-10-10 08:00 | 2000-10-10 12:00 | 1 | 2000-10-10 08:00 | 2000-10-10 12:00 | 0.5d | 0d |  |  | 114厂装配钳工1人 | 4h |
| 3 | 线路布设 |  | 2d | 2000-10-10 13:00 | 2000-10-12 12:00 | 2 | 2000-10-10 13:00 | 2000-10-12 12:00 | 2d | 2.5d |  |  | 114厂装配钳工1人; 114厂焊接技师1人; 114厂设计员1人 | 48h |
| 4 | 恢复盖板 |  | 0.5d | 2000-10-19 08:00 | 2000-10-19 12:00 | 19 | 2000-10-19 13:00 | 2000-10-19 17:00 | 0.5d | 0d |  |  | 114厂装配钳工1人 | 4h |
| 5 | 安装支坐 |  | 0.5d | 2000-10-10 13:00 | 2000-10-10 17:00 | 2 | 2000-10-10 13:00 | 2000-10-10 17:00 | 0.5d | 5.5d | 0d |  | 空工院1人 | 4h |
| 6 | 安装瞄准具 |  | 0.25d | 2000-10-11 08:00 | 2000-10-11 10:00 | 5 | 2000-10-11 08:00 | 2000-10-11 10:00 | 0.25d | 5.5d |  |  | 空工院1人 | 2h |
| 7 | 安装挂架 |  | 1d | 2000-10-11 08:00 | 2000-10-11 17:00 | 12 | 2000-10-11 13:00 | 2000-10-12 12:00 | 1d | 0d |  |  | 144厂装配钳工1人; 144厂设计员1人 | 16h |
| 8 | 安装通用梁 |  | 1d | 2000-10-12 08:00 | 2000-10-12 17:00 | 7 | 2000-10-12 13:00 | 2000-10-13 12:00 | 1d | 0d |  |  | 124厂装配钳工人; 124厂设计员人 | 16h |
| 9 | 安装挂弹钩 |  | 1d | 2000-10-13 08:00 | 2000-10-13 17:00 | 8 | 2000-10-13 13:00 | 2000-10-16 12:00 | 1d | 0d |  |  | 124厂装配钳工人; 124厂设计员人 | 16h |
| 10 | 安装火箭筒 |  | 1d | 2000-10-16 08:00 | 2000-10-16 17:00 | 9 | 2000-10-16 13:00 | 2000-10-17 12:00 | 1d | 0d |  |  | 124厂装配钳工人; 144厂装配钳工1人; 124厂设计员人 | 24h |
| 11 | 机内加强 |  | 0.5d | 2000-10-11 08:00 | 2000-10-11 12:00 | 2 | 2000-10-10 13:00 | 2000-10-10 17:00 | 0.5d | 3.5d |  | start no earlier than 2000-10-11 08:00 | 53所装配钳工1人; 53所设计员1人; 空一所设计员1人 | 12h |
| 12 | 安装接耳 |  | 0.5d | 2000-10-10 13:00 | 2000-10-10 17:00 | 2 | 2000-10-10 13:00 | 2000-10-11 12:00 | 1d | 0d |  |  | 53所装配钳工1人; 53所设计员1人; 空一所设计员1人 | 12h |
| 13 | 安装机轮罩 |  | 0.5d | 2000-10-13 08:00 | 2000-10-13 12:00 | 2 | 2000-10-10 13:00 | 2000-10-11 12:00 | 1d | 1.5d |  | start no earlier than 2000-10-13 08:00 | 53所装配钳工1人; 53所设计员1人; 空一所设计员1人 | 12h |
| 14 | 机身电缆孔 |  | 0.5d | 2000-10-12 08:00 | 2000-10-12 12:00 | 2 | 2000-10-10 13:00 | 2000-10-11 12:00 | 1d | 2.5d |  | start no earlier than 2000-10-12 08:00 | 53所装配钳工1人; 空一所设计员1人 | 8h |
| 15 | 系统联试 |  | 1d | 2000-10-17 08:00 | 2000-10-17 17:00 | 3, 10, 11, 12, 13, 14 | 2000-10-17 13:00 | 2000-10-18 12:00 | 1d | 0d |  |  | 114厂设计员1人; 53所设计员1人; 空一所总师1人; 124厂设计员人; 144厂设计员1人; 空工院1人 | 48h |
| 16 | 直升机顶平 |  | 0.25d | 2000-10-18 08:00 | 2000-10-18 10:00 | 15 | 2000-10-18 13:00 | 2000-10-18 15:00 | 0.25d | 0d |  |  | 空一所总师1人 | 2h |
| 17 | 校准校靶架 |  | 0.25d | 2000-10-18 10:00 | 2000-10-18 12:00 | 16 | 2000-10-18 15:00 | 2000-10-18 17:00 | 0.25d | 0d |  |  | 空工院1人 | 2h |
| 18 | 发射器校准 |  | 0.25d | 2000-10-18 13:00 | 2000-10-18 15:00 | 17 | 2000-10-19 08:00 | 2000-10-19 10:00 | 0.25d | 0d |  |  | 空工院1人; 124厂设计员人 | 4h |
| 19 | 瞄准具校准 |  | 0.25d | 2000-10-18 15:00 | 2000-10-18 17:00 | 18, 6 | 2000-10-19 10:00 | 2000-10-19 12:00 | 0.25d | 0d |  |  | 空工院1人 | 2h |
| 20 | 试飞 | milestone | 0.5d | 2000-10-19 13:00 | 2000-10-19 17:00 | 4, 19 | 2000-10-20 08:00 | 2000-10-20 12:00 | 0.5d | 0d |  |  | 空一所总师1人 | 4h |
