# 平行作业进度计划甘特图5.-

Schedule from MS Project, 2000-10-13 to 2000-12-04.
gyj

## Calendars

- 标准: Mon-Fri 08:00-12:00, 13:00-17:00; Sat-Sun off.

## Schedule

| ID | WBS | Task | Type | Duration | Start | Finish | Predecessors | Baseline start | Baseline finish | Baseline duration | Total slack | Free slack | Constraint |
| --- | --- | --- | --- | --- | --- | --- | --- | --- | --- | --- | --- | --- | --- |
| 1 | 1 | 平行作业改装 | milestone | 0d | 2000-10-13 | 2000-10-13 |  | 2000-10-13 | 2000-10-13 | 0d | 10d | 0d |  |
| 2 | 2 | **A改装** |  | 8d | 2000-10-13 | 2000-10-24 |  |  |  |  | 0d |  |  |
| 3 | 2.1 | A结构改装 |  | 2d | 2000-10-13 | 2000-10-16 |  | 2000-10-13 | 2000-10-16 | 2d | 0d |  |  |
| 4 | 2.2 | A发射控制系统 |  | 3d | 2000-10-13 | 2000-10-17 | 1 | 2000-10-13 | 2000-10-17 | 3d | 10d | 0d |  |
| 5 | 2.3 | A射击瞄准系统 |  | 0.75d | 2000-10-13 | 2000-10-13 | 1 | 2000-10-13 | 2000-10-13 | 0.75d | 19.25d | 4.25d |  |
| 6 | 2.4 | A外挂武器系统 |  | 4d | 2000-10-17 | 2000-10-20 | 3 | 2000-10-17 | 2000-10-20 | 4d | 0d |  |  |
| 7 | 2.5 | A联试校靶 | milestone | 2d | 2000-10-23 | 2000-10-24 | 4, 5, 6 | 2000-10-23 | 2000-10-24 | 2d | 14d | 2d |  |
| 8 | 3 | **B改装** |  | 9d | 2000-10-18 | 2000-10-30 |  |  |  |  | 1d |  |  |
| 9 | 3.1 | B结构改装 |  | 2d | 2000-10-19 | 2000-10-20 | 3 | 2000-10-17 | 2000-10-18 | 2d | 0d |  | as late as possible |
| 10 | 3.2 | B发射控制系统 |  | 3d | 2000-10-18 | 2000-10-20 | 4 | 2000-10-18 | 2000-10-20 | 3d | 10d | 1d |  |
| 11 | 3.3 | B射击瞄准系统 |  | 0.75d | 2000-10-20 | 2000-10-20 | 5 | 2000-10-13 | 2000-10-16 | 0.75d | 16.25d | 2.25d | start no earlier than 2000-10-20 |
| 12 | 3.4 | B外挂武器系统 |  | 4d | 2000-10-23 | 2000-10-26 | 9, 6 | 2000-10-19 | 2000-10-24 | 4d | 0d |  | as late as possible |
| 13 | 3.5 | B联试校靶 | milestone | 2d | 2000-10-27 | 2000-10-30 | 10, 11, 12, 7 | 2000-10-25 | 2000-10-26 | 2d | 12d | 2d |  |
| 14 | 4 | **C改装** |  | 9d | 2000-10-24 | 2000-11-03 |  |  |  |  | 1d |  |  |
| 15 | 4.1 | C结构改装 |  | 2d | 2000-10-25 | 2000-10-26 | 9 | 2000-10-19 | 2000-10-20 | 2d | 0d |  | as late as possible |
| 16 | 4.2 | C发射控制系统 |  | 3d | 2000-10-24 | 2000-10-26 | 10 | 2000-10-23 | 2000-10-25 | 3d | 9d | 2d | start no earlier than 2000-10-24 |
| 17 | 4.3 | C射击瞄准系统 |  | 0.75d | 2000-10-25 | 2000-10-25 | 11 | 2000-10-16 | 2000-10-17 | 0.75d | 15.25d | 5.25d | start no earlier than 2000-10-25 |
| 18 | 4.4 | C外挂武器系统 |  | 4d | 2000-10-27 | 2000-11-01 | 15, 12 | 2000-10-23 | 2000-10-26 | 4d | 0d |  | as late as possible |
| 19 | 4.5 | C联试校靶 | milestone | 2d | 2000-11-02 | 2000-11-03 | 16, 17, 18, 13 | 2000-10-27 | 2000-10-30 | 2d | 10d | 2d |  |
| 20 | 5 | **D改装** |  | 8d | 2000-10-31 | 2000-11-09 |  |  |  |  | 0d |  |  |
| 21 | 5.1 | D结构改装 |  | 2d | 2000-10-31 | 2000-11-01 | 15 | 2000-10-23 | 2000-10-24 | 2d | 0d |  | as late as possible |
| 22 | 5.2 | D发射控制系统 |  | 3d | 2000-10-31 | 2000-11-02 | 16 | 2000-10-26 | 2000-10-30 | 3d | 7d | 1d | start no earlier than 2000-10-31 |
| 23 | 5.3 | D射击瞄准系统 |  | 0.75d | 2000-11-02 | 2000-11-02 | 17 | 2000-10-17 | 2000-10-17 | 0.75d | 11.25d | 3.25d | start no earlier than 2000-11-02 |
| 24 | 5.4 | D外挂武器系统 |  | 4d | 2000-11-02 | 2000-11-07 | 21, 18 | 2000-10-25 | 2000-10-30 | 4d | 0d |  | as late as possible |
| 25 | 5.5 | D联试校靶 | milestone | 2d | 2000-11-08 | 2000-11-09 | 22, 23, 24, 19 | 2000-10-31 | 2000-11-01 | 2d | 8d | 2d |  |

| ID | WBS | Task | Type | Duration | Start | Finish | Predecessors | Baseline start | Baseline finish | Baseline duration | Total slack | Free slack | Constraint |
| --- | --- | --- | --- | --- | --- | --- | --- | --- | --- | --- | --- | --- | --- |
| 26 | 6 | **E改装** |  | 8d | 2000-11-06 | 2000-11-15 |  |  |  |  | 0d |  |  |
| 27 | 6.1 | E结构改装 |  | 2d | 2000-11-06 | 2000-11-07 | 21 | 2000-10-25 | 2000-10-26 | 2d | 0d |  | as late as possible |
| 28 | 6.2 | E发射控制系统 |  | 3d | 2000-11-06 | 2000-11-08 | 22 | 2000-10-31 | 2000-11-02 | 3d | 6d | 0d | start no earlier than 2000-11-06 |
| 29 | 6.3 | E射击瞄准系统 |  | 0.75d | 2000-11-08 | 2000-11-08 | 23 | 2000-10-18 | 2000-10-18 | 0.75d | 9.25d | 3.25d | start no earlier than 2000-11-08 |
| 30 | 6.4 | E外挂武器系统 |  | 4d | 2000-11-08 | 2000-11-13 | 27, 24 | 2000-10-27 | 2000-11-01 | 4d | 0d |  | as late as possible |
| 31 | 6.5 | E联试校靶 | milestone | 2d | 2000-11-14 | 2000-11-15 | 28, 29, 30, 25 | 2000-11-03 | 2000-11-06 | 2d | 6d | 2d |  |
| 32 | 7 | **F改装** |  | 9d | 2000-11-09 | 2000-11-21 |  |  |  |  | 1d |  |  |
| 33 | 7.1 | F结构改装 |  | 2d | 2000-11-10 | 2000-11-13 | 27 | 2000-10-27 | 2000-10-30 | 2d | 0d |  | as late as possible |
| 34 | 7.2 | F发射控制系统 |  | 3d | 2000-11-09 | 2000-11-13 | 28 | 2000-11-03 | 2000-11-07 | 3d | 6d | 2d |  |
| 35 | 7.3 | F射击瞄准系统 |  | 0.75d | 2000-11-17 | 2000-11-17 | 29 | 2000-10-18 | 2000-10-19 | 0.75d | 4.25d | 0.25d | start no earlier than 2000-11-17 |
| 36 | 7.4 | F外挂武器系统 |  | 4d | 2000-11-14 | 2000-11-17 | 33, 30 | 2000-10-31 | 2000-11-03 | 4d | 0d |  | as late as possible |
| 37 | 7.5 | F联试校靶 | milestone | 2d | 2000-11-20 | 2000-11-21 | 34, 35, 36, 31 | 2000-11-08 | 2000-11-09 | 2d | 4d | 2d |  |
| 38 | 8 | **G改装** |  | 8d | 2000-11-16 | 2000-11-27 |  |  |  |  | 0d |  |  |
| 39 | 8.1 | G结构改装 |  | 2d | 2000-11-16 | 2000-11-17 | 33 | 2000-10-31 | 2000-11-01 | 2d | 0d |  | as late as possible |
| 40 | 8.2 | G发射控制系统 |  | 3d | 2000-11-16 | 2000-11-20 | 34 | 2000-11-08 | 2000-11-10 | 3d | 4d | 0d | start no earlier than 2000-11-16 |
| 41 | 8.3 | G射击瞄准系统 |  | 0.75d | 2000-11-20 | 2000-11-20 | 35 | 2000-10-19 | 2000-10-20 | 0.75d | 5.25d | 0d | start no earlier than 2000-11-20 |
| 42 | 8.4 | G外挂武器系统 |  | 4d | 2000-11-20 | 2000-11-23 | 39, 36 | 2000-11-02 | 2000-11-07 | 4d | 0d |  | as late as possible |
| 43 | 8.5 | G联试校靶 | milestone | 2d | 2000-11-24 | 2000-11-27 | 40, 41, 42, 37 | 2000-11-13 | 2000-11-14 | 2d | 2d |  |  |
| 44 | 9 | **H改装** |  | 10d | 2000-11-20 | 2000-12-01 |  |  |  |  | 0d |  |  |
| 45 | 9.1 | H结构改装 |  | 2d | 2000-11-20 | 2000-11-21 | 39 | 2000-11-02 | 2000-11-03 | 2d | 2d |  |  |
| 46 | 9.2 | H发射控制系统 |  | 3d | 2000-11-21 | 2000-11-23 | 40 | 2000-11-13 | 2000-11-15 | 3d | 4d |  |  |
| 47 | 9.3 | H射击瞄准系统 |  | 0.75d | 2000-11-20 | 2000-11-21 | 41 | 2000-10-20 | 2000-10-20 | 0.75d | 6.5d |  |  |
| 48 | 9.4 | H外挂武器系统 |  | 4d | 2000-11-24 | 2000-11-29 | 45, 42 | 2000-11-06 | 2000-11-09 | 4d | 0d |  |  |
| 49 | 9.5 | H联试校靶 | milestone | 2d | 2000-11-30 | 2000-12-01 | 46, 47, 48, 43 | 2000-11-16 | 2000-11-17 | 2d | 0d |  |  |
| 50 | 10 | 试飞 | milestone | 1d | 2000-12-04 | 2000-12-04 | 49 | 2000-12-04 | 2000-12-04 | 1d | 0d |  |  |
