# mi-17项目甘特图

Schedule from MS Project, 1999-04-01 to 2000-11-03, A marks actual dates.
gyj

## Calendars

- 标准: Mon-Fri 08:00-12:00, 13:00-17:00; Sat-Sun off.

## Schedule

| ID | WBS | Task | Duration | Start | Finish | Predecessors | Complete | Baseline start | Baseline finish | Baseline duration |
| --- | --- | --- | --- | --- | --- | --- | --- | --- | --- | --- |
| 1 | 11000 | **组建项目办** | 11d | 1999-04-01 A | 1999-04-15 A |  | 100% | 1999-04-01 | 1999-04-15 | 11d |
| 2 | 1.1 | 成立项目办机构 | 6d | 1999-04-01 A | 1999-04-08 A |  | 100% | 1999-04-01 | 1999-04-08 | 6d |
| 3 | 1.2 | 研究配置人员 | 5d | 1999-04-09 A | 1999-04-15 A | 2 | 100% | 1999-04-09 | 1999-04-15 | 5d |
| 4 | 1.3 | 购置办公设备 | 5d | 1999-04-01 A | 1999-04-07 A |  | 100% | 1999-04-01 | 1999-04-07 | 5d |
| 5 | 1.4 | 编制办公制度 | 4d | 1999-04-01 A | 1999-04-06 A |  | 100% | 1999-04-01 | 1999-04-06 | 4d |
| 6 | 21000 | **签订武器挂架合同** | 23d | 1999-04-01 A | 1999-05-03 A | 1 | 100% | 1999-04-01 | 1999-05-03 | 23d |
| 7 | 2.1 | 挂架引进与国产化利弊分析 | 5d | 1999-04-01 A | 1999-04-07 A |  | 100% | 1999-04-01 | 1999-04-07 | 5d |
| 8 | 2.2 | 决策引进或国产化 | 5d | 1999-04-08 A | 1999-04-14 A | 7 | 100% | 1999-04-08 | 1999-04-14 | 5d |
| 9 | 2.3 | 成本调研与价格协商 | 8d | 1999-04-15 A | 1999-04-26 A | 8 | 100% | 1999-04-15 | 1999-04-26 | 8d |
| 10 | 2.4 | 签订合同 | 5d | 1999-04-27 A | 1999-05-03 A | 9 | 100% | 1999-04-27 | 1999-05-03 | 5d |
| 11 | 22000 | **技术服务合同** | 25d | 1999-04-01 A | 1999-05-05 A | 1 | 100% | 1999-04-01 | 1999-05-05 | 25d |
| 12 | 3.1 | 技术服务内容界定 | 10d | 1999-04-01 A | 1999-04-14 A |  | 100% | 1999-04-01 | 1999-04-14 | 10d |
| 13 | 3.2 | 费用商定 | 10d | 1999-04-15 A | 1999-04-28 A | 12 | 100% | 1999-04-15 | 1999-04-28 | 10d |
| 14 | 3.3 | 签订合同 | 5d | 1999-04-29 A | 1999-05-05 A | 13 | 100% | 1999-04-29 | 1999-05-05 | 5d |
| 15 | 23000 | **国内成品合同** | 38d | 1999-04-01 A | 1999-05-24 A | 1 | 100% | 1999-04-01 | 1999-05-24 | 38d |
| 16 | 4.1 | 成本调研 | 30d | 1999-04-01 A | 1999-05-12 A |  | 100% | 1999-04-01 | 1999-05-12 | 30d |
| 17 | 4.2 | 价格协商 | 5d | 1999-05-13 A | 1999-05-19 A | 16 | 100% | 1999-05-13 | 1999-05-19 | 5d |
| 18 | 4.3 | 合同签订 | 3d | 1999-05-20 A | 1999-05-24 A | 17 | 100% | 1999-05-20 | 1999-05-24 | 3d |
| 19 | 31000 | **冻结技术状态** | 15d | 1999-04-01 A | 1999-04-21 A | 11 | 100% | 1999-04-01 | 1999-04-21 | 15d |
| 20 | 5.1 | 机轮罩设计方案 | 1d | 1999-04-01 A | 1999-04-01 A |  | 100% | 1999-04-01 | 1999-04-01 | 1d |
| 21 | 5.2 | 导光板设计改进 | 10d | 1999-04-01 A | 1999-04-14 A |  | 100% | 1999-04-01 | 1999-04-14 | 10d |
| 22 | 5.3 | 操纵板设计改进 | 15d | 1999-04-01 A | 1999-04-21 A |  | 100% | 1999-04-01 | 1999-04-21 | 15d |
| 23 | 5.4 | 产品可靠性指标 | 10d | 1999-04-01 A | 1999-04-14 A |  | 100% | 1999-04-01 | 1999-04-14 | 10d |
| 24 | 5.5 | 火箭控制电路与PC-1吊舱、32管火发器协调 | 15d | 1999-04-01 A | 1999-04-21 A |  | 100% | 1999-04-01 | 1999-04-21 | 15d |

| ID | WBS | Task | Duration | Start | Finish | Predecessors | Complete | Remaining | Baseline start | Baseline finish | Baseline duration | Total slack | Free slack |
| --- | --- | --- | --- | --- | --- | --- | --- | --- | --- | --- | --- | --- | --- |
| 25 | 32000 | **成品验收** | 5d | 1999-12-21 A | 1999-12-27 | 82, 83 | 81% | 0.97d | 1999-12-21 | 1999-12-27 | 5d | 0d |  |
| 26 | 6.1 | KB-1验收 | 2d | 1999-12-21 A | 1999-12-22 |  | 85% | 0.3d | 1999-12-21 | 1999-12-22 | 2d | 3d |  |
| 27 | 6.2 | SMZZ-1验收 | 3d | 1999-12-21 A | 1999-12-23 |  | 85% | 0.45d | 1999-12-21 | 1999-12-23 | 3d | 2d |  |
| 28 | 6.3 | WIY-1验收 | 5d | 1999-12-21 A | 1999-12-27 A |  | 100% |  | 1999-12-21 | 1999-12-27 | 5d |  |  |
| 29 | 6.4 | JBZZ-1验收 | 4d | 1999-12-21 A | 1999-12-24 |  | 85% | 0.6d | 1999-12-21 | 1999-12-24 | 4d | 1d |  |
| 30 | 6.5 | GDG-II11验收 | 2d | 1999-12-21 A | 1999-12-22 |  | 85% | 0.3d | 1999-12-21 | 1999-12-22 | 2d | 3d |  |
| 31 | 6.6 | GDL-II1验收 | 2d | 1999-12-21 A | 1999-12-22 |  | 85% | 0.3d | 1999-12-21 | 1999-12-22 | 2d | 3d |  |
| 32 | 6.7 | HF-25G验收 | 2d | 1999-12-21 A | 1999-12-22 |  | 85% | 0.3d | 1999-12-21 | 1999-12-22 | 2d | 3d |  |
| 33 | 6.8 | 武器挂架验收 | 2d | 1999-12-21 | 1999-12-22 |  |  |  | 1999-12-21 | 1999-12-22 | 2d | 3d |  |
| 34 | 33000 | **编制文件** | 40d | 1999-04-01 A | 1999-05-26 A | 11 | 100% |  | 1999-04-01 | 1999-05-26 | 40d |  |  |
| 35 | 7.1 | 飞行员手册 | 15d | 1999-04-01 A | 1999-04-21 A |  | 100% |  | 1999-04-01 | 1999-04-21 | 15d |  |  |
| 36 | 7.2 | 地勤维护手册 | 15d | 1999-04-22 A | 1999-05-12 A | 35 | 100% |  | 1999-04-22 | 1999-05-12 | 15d |  |  |
| 37 | 7.3 | 试飞大纲 | 5d | 1999-05-13 A | 1999-05-19 A | 36 | 100% |  | 1999-05-13 | 1999-05-19 | 5d |  |  |
| 38 | 7.4 | 靶试大纲 | 5d | 1999-05-20 A | 1999-05-26 A | 37 | 100% |  | 1999-05-20 | 1999-05-26 | 5d |  |  |
| 39 | 8 | **协调工作** | 344d | 1999-05-03 | 2000-08-24 |  |  |  | 1999-05-03 | 2000-08-24 | 344d | 0d |  |
| 40 | 41000 | 资源调查 | 5d | 1999-05-03 | 1999-05-07 | 1, 49, 53 |  |  | 1999-05-03 | 1999-05-07 | 5d | 144d | 11d |
| 41 | 42000 | 组建改装团队 | 15d | 1999-05-25 | 1999-06-14 | 6, 11, 15, 40 |  |  | 1999-05-25 | 1999-06-14 | 15d | 133d |  |
| 42 | 8.3 | **部队协调** | 180d | 1999-12-17 | 2000-08-24 |  |  |  | 1999-12-17 | 2000-08-24 | 180d | 0d |  |
| 43 | 8.3.1 | A团协调 | 7d | 1999-12-17 | 1999-12-27 | 25FF, 41 |  |  | 1999-12-17 | 1999-12-27 | 7d | 0d |  |
| 44 | 43200 | B团协调 | 7d | 2000-01-28 | 2000-02-07 | 76FF |  |  | 2000-01-28 | 2000-02-07 | 7d | 0d |  |
| 45 | 43300 | C团协调 | 7d | 2000-04-21 | 2000-05-01 | 77FF |  |  | 2000-04-21 | 2000-05-01 | 7d | 0d |  |
| 46 | 43400 | D团协调 | 7d | 2000-05-05 | 2000-05-15 | 45, 78FF |  |  | 2000-05-05 | 2000-05-15 | 7d | 0d |  |
| 47 | 43500 | E团协调 | 7d | 2000-06-07 | 2000-06-15 | 46, 79FF |  |  | 2000-06-07 | 2000-06-15 | 7d | 0d |  |
| 48 | 43600 | F团协调 | 7d | 2000-08-16 | 2000-08-24 | 47, 80FF |  |  | 2000-08-16 | 2000-08-24 | 7d | 0d |  |

| ID | WBS | Task | Duration | Start | Finish | Predecessors | Complete | Baseline start | Baseline finish | Baseline duration | Total slack |
| --- | --- | --- | --- | --- | --- | --- | --- | --- | --- | --- | --- |
| 49 | 51000 | **路线优化** | 20d | 1999-04-01 A | 1999-04-28 A | 1 | 100% | 1999-04-01 | 1999-04-28 | 20d |  |
| 50 | 9.1 | 计算各部队距离 | 5d | 1999-04-01 A | 1999-04-07 A |  | 100% | 1999-04-01 | 1999-04-07 | 5d |  |
| 51 | 9.2 | 计算路线 | 10d | 1999-04-08 A | 1999-04-21 A | 50 | 100% | 1999-04-08 | 1999-04-21 | 10d |  |
| 52 | 9.3 | 分析得出最优路线 | 5d | 1999-04-22 A | 1999-04-28 A | 51 | 100% | 1999-04-22 | 1999-04-28 | 5d |  |
| 53 | 52000 | **工序优化** | 22d | 1999-04-01 A | 1999-04-30 A | 19 | 100% | 1999-04-01 | 1999-04-30 | 22d |  |
| 54 | 10.1 | 改装工序结构分解 | 5d | 1999-04-01 A | 1999-04-07 A |  | 100% | 1999-04-01 | 1999-04-07 | 5d |  |
| 55 | 10.2 | 建立工序逻辑关系 | 5d | 1999-04-08 A | 1999-04-14 A | 54 | 100% | 1999-04-08 | 1999-04-14 | 5d |  |
| 56 | 10.3 | 计算各工序时间 | 5d | 1999-04-15 A | 1999-04-21 A | 55 | 100% | 1999-04-15 | 1999-04-21 | 5d |  |
| 57 | 10.4 | 得出关键线路 | 4d | 1999-04-22 A | 1999-04-27 A | 56 | 100% | 1999-04-22 | 1999-04-27 | 4d |  |
| 58 | 10.5 | 进行工序优化 | 3d | 1999-04-28 A | 1999-04-30 A | 57 | 100% | 1999-04-28 | 1999-04-30 | 3d |  |
| 59 | 11 | **改装实施** | 223d | 1999-12-28 | 2000-11-02 |  |  | 1999-12-28 | 2000-11-02 | 223d | 0d |
| 60 | 53100 | A部队改装 | 30d | 1999-12-28 | 2000-02-07 | 43 |  | 1999-12-28 | 2000-02-07 | 30d | 0d |
| 61 | 53200 | B部队改装 | 60d | 2000-02-08 | 2000-05-01 | 44, 60 |  | 2000-02-08 | 2000-05-01 | 60d | 0d |
| 62 | 53300 | C部队改装 | 10d | 2000-05-02 | 2000-05-15 | 45, 61 |  | 2000-05-02 | 2000-05-15 | 10d | 0d |
| 63 | 53400 | D部队改装 | 20d | 2000-05-16 | 2000-06-12 | 46, 62 |  | 2000-05-16 | 2000-06-12 | 20d | 0d |
| 64 | 53500 | E部队改装 | 50d | 2000-06-16 | 2000-08-24 | 47, 63 |  | 2000-06-16 | 2000-08-24 | 50d | 0d |
| 65 | 53600 | F部队改装 | 50d | 2000-08-25 | 2000-11-02 | 48, 64 |  | 2000-08-25 | 2000-11-02 | 50d | 0d |
| 66 | 54000 | **改装结束** | 1d | 2000-11-03 | 2000-11-03 | 81 |  | 2000-11-03 | 2000-11-03 | 1d | 0d |
| 67 | 12.1 | 技术绩效 | 1d | 2000-11-03 | 2000-11-03 |  |  | 2000-11-03 | 2000-11-03 | 1d | 0d |
| 68 | 12.2 | 成本绩效 | 1d | 2000-11-03 | 2000-11-03 |  |  | 2000-11-03 | 2000-11-03 | 1d | 0d |
| 69 | 12.3 | 进度计划绩效 | 1d | 2000-11-03 | 2000-11-03 |  |  | 2000-11-03 | 2000-11-03 | 1d | 0d |
| 70 | 12.4 | 客户联系 | 1d | 2000-11-03 | 2000-11-03 |  |  | 2000-11-03 | 2000-11-03 | 1d | 0d |
| 71 | 12.5 | 团队联系 | 1d | 2000-11-03 | 2000-11-03 |  |  | 2000-11-03 | 2000-11-03 | 1d | 0d |
| 72 | 12.6 | 交流 | 1d | 2000-11-03 | 2000-11-03 |  |  | 2000-11-03 | 2000-11-03 | 1d | 0d |
| 73 | 12.7 | 识别问题与解决问题 | 1d | 2000-11-03 | 2000-11-03 |  |  | 2000-11-03 | 2000-11-03 | 1d | 0d |
| 74 | 12.8 | 对未来项目的建议 | 1d | 2000-11-03 | 2000-11-03 |  |  | 2000-11-03 | 2000-11-03 | 1d | 0d |

| ID | WBS | Task | Duration | Start | Finish | Predecessors | Complete | Remaining | Baseline start | Baseline finish | Baseline duration | Total slack |
| --- | --- | --- | --- | --- | --- | --- | --- | --- | --- | --- | --- | --- |
| 75 | 13 | **机务、飞行员培训** | 196d | 2000-02-03 | 2000-11-02 |  |  |  | 2000-02-03 | 2000-11-02 | 196d | 0d |
| 76 | 61100 | A团培训 | 3d | 2000-02-03 | 2000-02-07 | 34, 60FF |  |  | 2000-02-03 | 2000-02-07 | 3d | 0d |
| 77 | 61200 | B团培训 | 3d | 2000-04-27 | 2000-05-01 | 61FF |  |  | 2000-04-27 | 2000-05-01 | 3d | 0d |
| 78 | 61300 | C团培训 | 3d | 2000-05-11 | 2000-05-15 | 62FF |  |  | 2000-05-11 | 2000-05-15 | 3d | 0d |
| 79 | 61400 | D团培训 | 3d | 2000-06-13 | 2000-06-15 | 63 |  |  | 2000-06-13 | 2000-06-15 | 3d | 0d |
| 80 | 61500 | E团培训 | 3d | 2000-08-22 | 2000-08-24 | 64FF |  |  | 2000-08-22 | 2000-08-24 | 3d | 0d |
| 81 | 61600 | F团培训 | 3d | 2000-10-31 | 2000-11-02 | 65FF |  |  | 2000-10-31 | 2000-11-02 | 3d | 0d |
| 82 | 71000 | 武器挂架交付 | 164d | 1999-05-04 A | 1999-12-17 | 6 | 9% | 148.7d | 1999-05-04 | 1999-09-06 | 90d | 1d |
| 83 | 72000 | **国内成品交付** | 150d | 1999-05-25 A | 1999-12-20 | 15 | 87% | 19.29d | 1999-05-25 | 1999-12-20 | 150d | 0d |
| 84 | 15.1 | KB-1交付 | 150d | 1999-05-25 A | 1999-12-20 |  | 85% | 22.5d | 1999-05-25 | 1999-12-20 | 150d | 0d |
| 85 | 15.2 | SMZZ-1交付 | 150d | 1999-05-25 A | 1999-12-20 |  | 85% | 22.5d | 1999-05-25 | 1999-12-20 | 150d | 0d |
| 86 | 15.3 | JBZZ-1交付 | 150d | 1999-05-25 A | 1999-12-20 |  | 85% | 22.5d | 1999-05-25 | 1999-12-20 | 150d | 0d |
| 87 | 15.4 | WJY-1交付 | 150d | 1999-05-25 A | 1999-12-20 A |  | 100% |  | 1999-05-25 | 1999-12-20 | 150d |  |
| 88 | 15.5 | GDG-II11交付 | 150d | 1999-05-25 A | 1999-12-20 |  | 85% | 22.5d | 1999-05-25 | 1999-12-20 | 150d | 0d |
| 89 | 15.6 | GDL-II1交付 | 150d | 1999-05-25 A | 1999-12-20 |  | 85% | 22.5d | 1999-05-25 | 1999-12-20 | 150d | 0d |
| 90 | 15.7 | HF-25G交付 | 150d | 1999-05-25 A | 1999-12-20 |  | 85% | 22.5d | 1999-05-25 | 1999-12-20 | 150d | 0d |
